# WBS Teresa martin mejoras

Schedule from MS Project, 2015-04-06 to 2015-08-14.

## Calendars

- Estándar: Mon-Fri 09:00-13:00, 15:00-19:00; Sat-Sun off.

## Schedule

| ID | WBS | Task | Duration | Start | Finish | Predecessors | Total slack | Constraint |
| --- | --- | --- | --- | --- | --- | --- | --- | --- |
| 1 | 1 | Teresa Martin | 95d? | 2015-04-06 | 2015-08-14 |  | 0d | finish no earlier than 2015-08-14 |
| 2 | 2 | **1- Análisis** | 13d | 2015-04-07 | 2015-04-23 |  |  |  |
| 3 | 2.1 | 1.1-Carta de iniciación del proyecto. | 1d | 2015-04-07 | 2015-04-07 |  | 12d |  |
| 4 | 2.2 | **1.2-Elicitacion** | 4d | 2015-04-07 | 2015-04-10 |  |  |  |
| 5 | 2.2.1 | 1.2.1- Evaluar proveedores de req. a entrevistar | 1d | 2015-04-07 | 2015-04-07 |  | 0d |  |
| 6 | 2.2.2 | 1.2.2- Definicion de estrategia de recoleccion de req. | 1d | 2015-04-08 | 2015-04-08 | 5 | 0d | finish no earlier than 2015-04-08 |
| 7 | 2.2.3 | 1.2.3- Planificar reuniones de elicitación de req. | 1d | 2015-04-09 | 2015-04-09 | 6 | 0d |  |
| 8 | 2.2.4 | 1.2.4- Identificar procesos del sistema. | 1d | 2015-04-10 | 2015-04-10 | 7 | 0d |  |
| 9 | 2.3 | 1.3- Minuta de reunión de arranque. | 1d | 2015-04-10 | 2015-04-10 | 7 | 0d | start no earlier than 2015-04-10 |
| 10 | 2.4 | **1.4- Planeación de proyecto.** | 4d | 2015-04-13 | 2015-04-16 | 4 |  |  |
| 11 | 2.4.1 | 1.4.1- Descripción de la problemática. | 1d | 2015-04-13 | 2015-04-13 | 9 | 3d |  |
| 12 | 2.4.2 | 1.4.3- Organigrama. | 1d | 2015-04-13 | 2015-04-13 | 9 | 3d |  |
| 13 | 2.4.3 | 1.4.4- Alcance. | 1d | 2015-04-13 | 2015-04-13 | 9 | 0d |  |
| 14 | 2.4.4 | 1.4.5- Elementos clave para su planeación, monitoreo y control. | 1d | 2015-04-14 | 2015-04-14 | 13 | 2d |  |
| 15 | 2.4.5 | 1.4.6- Perfiles de los participantes y del administrador. | 1d | 2015-04-14 | 2015-04-14 | 13 | 0d |  |
| 16 | 2.4.6 | **1.4.7- Diagrama de Gantt(Wbs).** | 1d | 2015-04-15 | 2015-04-15 | 15 | 0d |  |
| 17 | 2.4.6.1 | 1.4.7.1- Matriz de responsabilidades. | 1d | 2015-04-15 | 2015-04-15 | 15 | 1d |  |
| 18 | 2.4.6.2 | 1.4.7.2- Diagrama de la ruta critica. | 1d | 2015-04-15 | 2015-04-15 | 15 | 0d |  |
| 19 | 2.5 | 1.4.8- Lista de factores clave de desempeño. | 1d | 2015-04-16 | 2015-04-16 | 18 | 5d |  |
| 20 | 2.6 | 1.4.9- Matriz de comunicación y justificación. | 1d | 2015-04-16 | 2015-04-16 | 18 | 0d |  |
| 21 | 2.7 | **1.5- Definición de estandar de calidad.** | 3d | 2015-04-17 | 2015-04-21 | 10 | 0d |  |
| 22 | 2.7.1 | 1.5.1- Gestión del alcance. | 1d | 2015-04-17 | 2015-04-17 | 20 | 0d |  |
| 23 | 2.7.2 | 1.5.2- Gestión del tiempo. | 1d | 2015-04-20 | 2015-04-20 | 22 | 0d |  |
| 24 | 2.7.3 | 1.5.3- Gestión de costos. | 1d | 2015-04-21 | 2015-04-21 | 23 | 0d |  |
| 25 | 2.7.4 | 1.5.4- Gestión de calidad. | 1d | 2015-04-21 | 2015-04-21 | 23 | 0d |  |

| ID | WBS | Task | Duration | Start | Finish | Predecessors | Total slack |
| --- | --- | --- | --- | --- | --- | --- | --- |
| 26 | 2.8 | **1.6- Definicion de ciclo de vida.** | 1d | 2015-04-22 | 2015-04-22 | 21 | 0d |
| 27 | 2.8.1 | 1.6.1- Justificación de los procesos. | 1d | 2015-04-22 | 2015-04-22 | 25 | 0d |
| 28 | 2.9 | **1.7- Script(plantilla) del proceso de admón.** | 1d | 2015-04-23 | 2015-04-23 |  | 0d |
| 29 | 2.9.1 | 1.7.1- Políticas. | 1d | 2015-04-23 | 2015-04-23 | 27 | 0d |
| 30 | 2.10 | 1.8- Mercado meta. | 1d | 2015-04-23 | 2015-04-23 | 27 | 0d |
| 31 | 2.11 | 1.9- Justificar el patrón de diseño a utilizar. | 1d | 2015-04-23 | 2015-04-23 | 27 | 0d |
| 32 | 2.12 | 1.10- Identificar los req. funcionales. | 1d | 2015-04-23 | 2015-04-23 | 27 | 0d |
| 33 | 2.13 | 1.11- Identificar los req. no funcionales. | 1d | 2015-04-23 | 2015-04-23 | 27 | 0d |
| 34 | 3 | **2- Diseño** | 7d | 2015-04-24 | 2015-05-04 | 2 | 0d |
| 35 | 3.1 | 2.1- Estructura del Proyecto. | 1d | 2015-04-24 | 2015-04-24 | 33 | 8d |
| 36 | 3.2 | 2.2-Diagrama de actividades. | 1d | 2015-04-24 | 2015-04-24 | 33 | 8d |
| 37 | 3.3 | 2.3- Diagramas de casos de uso. | 1d | 2015-04-24 | 2015-04-24 | 33 | 0d |
| 38 | 3.4 | 2.4- Diagramas de secuencia. | 1d | 2015-04-27 | 2015-04-27 | 37 | 7d |
| 39 | 3.5 | 2.5- Diagra de clases. | 2d | 2015-04-27 | 2015-04-28 | 37 | 0d |
| 40 | 3.6 | 2.6- Diagrama de rol. | 1d | 2015-04-29 | 2015-04-29 | 39 | 5d |
| 41 | 3.7 | 2.7-Diagrama de interación. | 1d | 2015-04-29 | 2015-04-29 | 39 | 5d |
| 42 | 3.8 | 2.8-Diagrama de componentes. | 1d | 2015-04-29 | 2015-04-29 | 39 | 5d |
| 43 | 3.9 | 2.9- Diagrama despliegue. | 1d | 2015-04-29 | 2015-04-29 | 39 | 0d |
| 44 | 3.10 | **2.10- Base de datos.** | 2d | 2015-04-30 | 2015-05-01 | 43 | 0d |
| 45 | 3.10.1 | 2.10.1- Diagrama entidad relación. | 1d | 2015-04-30 | 2015-04-30 | 43 | 0d |
| 46 | 3.10.2 | 2.10.2-Diagrama relacional. | 1d | 2015-05-01 | 2015-05-01 | 45 | 0d |
| 47 | 3.11 | 2.11- Maquetación. | 1d | 2015-05-04 | 2015-05-04 | 46 | 0d |
| 48 | 3.12 | 2.12- Mapa de naveción. | 1d | 2015-05-04 | 2015-05-04 | 46 | 0d |
| 49 | 4 | **3- Codificación** | 29d | 2015-05-05 | 2015-06-12 | 34 | 0d |
| 50 | 4.1 | 3.1-Creación de la DB. | 1d | 2015-05-05 | 2015-05-05 | 34 | 30d |
| 51 | 4.2 | 3.2-Conexión a DB. | 1d | 2015-05-05 | 2015-05-05 | 34 | 0d |

| ID | WBS | Task | Duration | Start | Finish | Predecessors | Total slack |
| --- | --- | --- | --- | --- | --- | --- | --- |
| 52 | 4.3 | **3.3- Módulo alumnos** | 10d | 2015-05-06 | 2015-05-19 | 51 | 0d |
| 53 | 4.3.1 | 3.3.1-Interfaz. | 2d | 2015-05-06 | 2015-05-07 | 51 | 0d |
| 54 | 4.3.2 | 3.3.3-Alta de alumno. | 2d | 2015-05-08 | 2015-05-11 | 53 | 0d |
| 55 | 4.3.3 | 3.3.4-Baja de alumno. | 2d | 2015-05-12 | 2015-05-13 | 54 | 0d |
| 56 | 4.3.4 | 3.3.5-Actualización de alumno. | 2d | 2015-05-14 | 2015-05-15 | 55 | 0d |
| 57 | 4.3.5 | 3.3.6- Consultar alumnos. | 2d | 2015-05-18 | 2015-05-19 | 56 | 0d |
| 58 | 4.4 | **3.4-Módulo pagos** | 2d | 2015-05-20 | 2015-05-21 | 52 | 0d |
| 59 | 4.4.1 | 3.4.1- interfaz. | 1d | 2015-05-20 | 2015-05-20 | 57 | 3d |
| 60 | 4.4.2 | 3.4.2- Pago de colegiaturas. | 1d | 2015-05-20 | 2015-05-20 | 57 | 0d |
| 61 | 4.4.3 | 3.4.3- Editar pago. | 1d | 2015-05-21 | 2015-05-21 | 60 | 0d |
| 62 | 4.4.4 | 3.4.4- Eliminar pago. | 1d | 2015-05-21 | 2015-05-21 | 60 | 0d |
| 63 | 4.4.5 | 3.4.5- Consultar pago. | 1d | 2015-05-21 | 2015-05-21 | 60 | 0d |
| 64 | 4.5 | **3.5- Módulo becas** | 5d | 2015-05-22 | 2015-05-28 | 58 | 0d |
| 65 | 4.5.1 | 3.5.1- Interfaz. | 1d | 2015-05-22 | 2015-05-22 | 58 | 6d |
| 66 | 4.5.2 | 3.5.2- Asignar beca. | 2d | 2015-05-22 | 2015-05-25 | 58 | 0d |
| 67 | 4.5.3 | 3.5.3- Editar beca. | 2d | 2015-05-26 | 2015-05-27 | 66 | 0d |
| 68 | 4.5.4 | 3.5.4- Eliminar beca. | 1d | 2015-05-28 | 2015-05-28 | 67 | 0d |
| 69 | 4.5.5 | 3.5.6- Consultar beca. | 1d | 2015-05-28 | 2015-05-28 | 67 | 0d |
| 70 | 4.6 | **3.6- Módulo Reportes** | 8d | 2015-05-29 | 2015-06-09 | 64 | 0d |
| 71 | 4.6.1 | 3.6.1- Interfaz. | 1d | 2015-05-29 | 2015-05-29 | 69 | 10d |
| 72 | 4.6.2 | 3.6.2- Consultar pagos. | 2d | 2015-05-29 | 2015-06-01 | 69 | 0d |
| 73 | 4.6.3 | 3.6.3- Consultar alumnos. | 2d | 2015-06-02 | 2015-06-03 | 72 | 0d |
| 74 | 4.6.4 | 3.6.4- Colsultar becas. | 2d | 2015-06-04 | 2015-06-05 | 73 | 0d |
| 75 | 4.6.5 | 3.6.5- Consultar ciclos. | 2d | 2015-06-08 | 2015-06-09 | 74 | 0d |

| ID | WBS | Task | Duration | Start | Finish | Predecessors | Total slack |
| --- | --- | --- | --- | --- | --- | --- | --- |
| 76 | 4.7 | **3.7- Módulo Ciclos** | 3d | 2015-06-10 | 2015-06-12 | 70 | 0d |
| 77 | 4.7.1 | 3.7.1- Interfaz. | 1d | 2015-06-10 | 2015-06-10 | 75 | 4d |
| 78 | 4.7.2 | 3.7.2- Asignar ciclo. | 2d | 2015-06-10 | 2015-06-11 | 75 | 0d |
| 79 | 4.7.3 | 3.7.3- Editar ciclo. | 1d | 2015-06-12 | 2015-06-12 | 78 | 0d |
| 80 | 4.7.4 | 3.7.4- Eliminar ciclo. | 1d | 2015-06-12 | 2015-06-12 | 78 | 0d |
| 81 | 4.7.5 | 3.7.5- Consultar ciclo. | 1d | 2015-06-12 | 2015-06-12 | 78 | 0d |
| 82 | 5 | **4.-Pruebas** | 2d | 2015-06-15 | 2015-06-16 | 49 | 0d |
| 83 | 5.1 | 4.1-Pruebas unitarias. | 1d | 2015-06-15 | 2015-06-15 | 81 | 44d |
| 84 | 5.2 | 4.2-Pruebas de integración. | 1d | 2015-06-15 | 2015-06-15 | 81 | 0d |
| 85 | 5.3 | 4.3-Pruebas de rendimiento. | 1d | 2015-06-16 | 2015-06-16 | 84 | 43d |
| 86 | 5.4 | 4.4-Pruebas del sistema. | 1d | 2015-06-16 | 2015-06-16 | 84 | 0d |
| 87 | 6 | 5.- Entrega Versión 0.1 | 1d | 2015-06-17 | 2015-06-17 | 86 | 0d |
| 88 | 7 | **1- Análisis versión 0.1** | 2d | 2015-06-18 | 2015-06-19 | 87 | 0d |
| 89 | 7.1 | 1.1- Identificar procesos del sistema. | 1d | 2015-06-18 | 2015-06-18 | 87 | 3d |
| 90 | 7.2 | 1.2- Minuta de reunión. | 1d | 2015-06-18 | 2015-06-18 | 87 | 0d |
| 91 | 7.3 | 1.3- Identificar los req. funcionales. | 1d | 2015-06-19 | 2015-06-19 | 90 | 0d |
| 92 | 7.4 | 1.4- Identificar los req. no funcionales. | 1d | 2015-06-19 | 2015-06-19 | 90 | 0d |
| 93 | 8 | **2- Diseño versión 0.1** | 4d | 2015-06-22 | 2015-06-25 | 88 | 0d |
| 94 | 8.1 | 2.1- Diagrama de rol. | 1d | 2015-06-22 | 2015-06-22 | 92 | 3d |
| 95 | 8.2 | 2.2-Diagrama de interación. | 1d | 2015-06-22 | 2015-06-22 | 92 | 3d |
| 96 | 8.3 | 2.3- Diagrama de componentes. | 1d | 2015-06-22 | 2015-06-22 | 92 | 0d |
| 97 | 8.4 | 2.4- Diagrama despliegue. | 1d | 2015-06-23 | 2015-06-23 | 96 | 0d |
| 98 | 8.5 | 2.5- Maquetación. | 1d | 2015-06-24 | 2015-06-24 | 97 | 0d |
| 99 | 8.6 | 2.6- Mapa de naveción. | 1d | 2015-06-25 | 2015-06-25 | 98 | 0d |

| ID | WBS | Task | Duration | Start | Finish | Predecessors | Total slack |
| --- | --- | --- | --- | --- | --- | --- | --- |
| 100 | 9 | **3- Codificación versión 0.1** | 15d | 2015-06-26 | 2015-07-16 | 93 | 0d |
| 101 | 9.1 | **3.1-Corrección en alguno de los módulos.** | 15d | 2015-06-26 | 2015-07-16 | 99 | 0d |
| 102 | 9.1.1 | 3.1.1- Módulo alumnos versión0.1. | 3d | 2015-06-26 | 2015-06-30 | 99 | 0d |
| 103 | 9.1.2 | 3.1.2- Módulo pagos versión0.1. | 3d | 2015-07-01 | 2015-07-03 | 102 | 0d |
| 104 | 9.1.3 | 3.1.3- Módulo becas versión0.1. | 3d | 2015-07-06 | 2015-07-08 | 103 | 0d |
| 105 | 9.1.4 | 3.1.4- Módulo reportes versión0.1. | 4d | 2015-07-09 | 2015-07-14 | 104 | 0d |
| 106 | 9.1.5 | 3.1.5- Módulo ciclos versión0.1. | 2d | 2015-07-15 | 2015-07-16 | 105 | 0d |
| 107 | 10 | **4.-Pruebas versión 0.1** | 7d | 2015-07-17 | 2015-07-27 | 100 | 0d |
| 108 | 10.1 | 4.1-Pruebas unitarias versión0.1. | 2d | 2015-07-17 | 2015-07-20 | 106 | 0d |
| 109 | 10.2 | 4.2-Pruebas de integración versión0.1. | 1d | 2015-07-21 | 2015-07-21 | 108 | 0d |
| 110 | 10.3 | 4.3-Pruebas de rendimiento versión0.1. | 2d | 2015-07-22 | 2015-07-23 | 109 | 0d |
| 111 | 10.4 | 4.4-Pruebas del sistema versión0.1. | 2d | 2015-07-24 | 2015-07-27 | 110 | 0d |
| 112 | 11 | 5.- Entrega versión 0.2 | 1d | 2015-07-28 | 2015-07-28 | 107 | 0d |
| 113 | 12 | **1- Análisis versió 0.2** | 1d | 2015-07-29 | 2015-07-29 | 112 | 0d |
| 114 | 12.1 | 1.1- Minuta de reunión versión0.2. | 1d | 2015-07-29 | 2015-07-29 | 112 | 0d |
| 115 | 13 | **2- Diseño version 0.2** | 1d | 2015-07-30 | 2015-07-30 | 113 | 0d |
| 116 | 13.1 | 2.1- Maquetación versión0.2. | 1d | 2015-07-30 | 2015-07-30 | 114 | 0d |
| 117 | 13.2 | 2.2- Mapa de naveción versión0.2. | 1d | 2015-07-30 | 2015-07-30 | 114 | 0d |
| 118 | 14 | **3- Codificación versión0.2** | 1d | 2015-07-31 | 2015-07-31 | 115 | 0d |
| 119 | 14.1 | 3.1- Aceptación de los módulos. | 1d | 2015-07-31 | 2015-07-31 | 117 | 0d |
| 120 | 15 | **4.-Pruebas versión 0.2** | 4d | 2015-08-03 | 2015-08-06 | 118 | 0d |
| 121 | 15.1 | 4.1- Pruebas de rendimiento versión0.2. | 2d | 2015-08-03 | 2015-08-04 | 119 | 0d |
| 122 | 15.2 | 4.2- Pruebas del sistema 0.2. | 2d | 2015-08-05 | 2015-08-06 | 121 | 0d |
| 123 | 16 | **5.-Implementación** | 2d | 2015-08-07 | 2015-08-10 | 120 | 0d |
| 124 | 16.1 | 5.1-Elección del Hosting. | 1d | 2015-08-07 | 2015-08-07 | 122 | 0d |
| 125 | 16.2 | 5.2-Copiar los archivos fuente. | 1d | 2015-08-10 | 2015-08-10 | 124 | 0d |

| ID | WBS | Task | Duration | Start | Finish | Predecessors | Total slack |
| --- | --- | --- | --- | --- | --- | --- | --- |
| 126 | 17 | **6.-Cierre del Proyecto.** | 3d | 2015-08-11 | 2015-08-13 | 123 | 0d |
| 127 | 17.1 | 6.1-Carta de Aceptación. | 1d | 2015-08-11 | 2015-08-11 | 125 | 3d |
| 128 | 17.2 | 6.2-Acta de cierrede proyectos. | 1d | 2015-08-11 | 2015-08-11 | 125 | 0d |
| 129 | 17.3 | 6.3-Evaluación de desempeño. | 1d | 2015-08-12 | 2015-08-12 | 128 | 2d |
| 130 | 17.4 | 6.4-Liberación de recursos. | 1d | 2015-08-12 | 2015-08-12 | 128 | 2d |
| 131 | 17.5 | 6.5-Lecciones aprendidas. | 1d | 2015-08-12 | 2015-08-12 | 128 | 0d |
| 132 | 17.6 | 6.6-Informe final(cierre). | 1d | 2015-08-13 | 2015-08-13 | 131 | 0d |
| 133 | 18 | 7.- Entrega final versión 0.3 | 1d | 2015-08-14 | 2015-08-14 | 132, 126 | 0d |
